# Demo Data Centre Fit-Out

Schedule from Primavera P6, 2026-01-21 to 2026-09-09, data date 2026-03-02, A marks actual dates.

## Calendars

- Standard 5-Day: Mon-Fri 08:00-16:00; Sat-Sun off. Exceptions (off unless hours are given): 2026-04-03, 2026-05-01, 2026-06-10 08:00-16:00.

## Schedule

| ID | WBS | Activity | Type | Duration | Start | Finish | Predecessors | Complete | Remaining | Planned start | Planned finish | Total float | Free float | Constraint |
| --- | --- | --- | --- | --- | --- | --- | --- | --- | --- | --- | --- | --- | --- | --- |
|  | MS | **Project Milestones** |  |  | 2026-01-21 | 2026-09-09 |  |  |  |  |  |  |  |  |
| MS-010 |  | Notice to Proceed |  | 0d | 2026-01-21 A | 2026-01-21 A |  | 100% |  | 2026-01-12 | 2026-01-12 |  |  |  |
| MS-020 |  | Power-on | milestone | 0d | 2026-08-26 | 2026-08-26 | CX-030 |  |  | 2026-08-12 | 2026-08-12 | 10d |  |  |
| MS-030 |  | Practical Completion | milestone | 0d | 2026-09-09 | 2026-09-09 | CX-040 |  |  | 2026-08-26 | 2026-08-26 | -1d | 0d | finish on or before 2026-09-08 |
|  | EW | **Enabling Works** |  |  | 2026-01-21 | 2026-03-05 |  |  |  |  |  |  |  |  |
| EW-010 |  | Site establishment & hoarding |  | 10d | 2026-01-21 A | 2026-02-03 A | MS-010 | 100% |  | 2026-01-12 | 2026-01-23 |  |  |  |
| EW-020 |  | Strip-out of existing services |  | 15d | 2026-02-04 A | 2026-02-24 A | EW-010 | 100% |  | 2026-01-26 | 2026-02-13 |  |  |  |
| EW-030 |  | Builders-work openings |  | 10d | 2026-02-18 A | 2026-03-05 | EW-020 | 60% | 4d | 2026-02-16 | 2026-02-27 | 11d | 0d |  |
|  | ST | **Structure & Envelope** |  |  | 2026-02-23 | 2026-04-10 |  |  |  |  |  |  |  |  |
| ST-010 |  | Structural steel platform |  | 20d | 2026-02-23 A | 2026-03-19 | EW-030 | 30% | 14d | 2026-03-02 | 2026-03-27 | 15d | 0d |  |
| ST-020 |  | Roof penetrations & weatherproofing |  | 10d | 2026-03-20 | 2026-04-02 | ST-010 |  |  | 2026-03-30 | 2026-04-13 | 50d | 0d |  |
| ST-030 |  | Plant deck screed |  | 5d | 2026-04-06 | 2026-04-10 | ST-020 |  |  | 2026-04-14 | 2026-04-20 | 50d | 31d |  |
|  | MEP | **MEP Installation** |  |  | 2026-02-10 | 2026-07-07 |  |  |  |  |  |  |  |  |
| MEP-010 |  | Chiller procurement (16-wk lead) |  | 80d | 2026-02-10 A | 2026-05-26 |  | 25% | 60d | 2026-01-12 | 2026-05-05 | 19d | 0d |  |
| MEP-020 |  | CRAC unit procurement |  | 60d | 2026-03-02 | 2026-05-26 |  |  |  | 2026-01-12 | 2026-04-06 | -1d | 0d |  |
| MEP-030 |  | Pipework first fix |  | 20d | 2026-03-27 | 2026-04-24 | ST-010 FS+5d |  |  | 2026-04-07 | 2026-05-05 | 20d | 21d |  |
| MEP-040 |  | Electrical containment |  | 15d | 2026-03-27 | 2026-04-17 | ST-010 FS+5d |  |  | 2026-04-07 | 2026-04-27 | 15d | 0d |  |
| MEP-070 |  | LV switchboard installation |  | 15d | 2026-04-20 | 2026-05-11 | MEP-040 |  |  | 2026-04-28 | 2026-05-19 | 15d | 16d |  |
| MEP-050 |  | Chiller installation & rigging |  | 10d | 2026-05-27 | 2026-06-09 | ST-030, MEP-010 |  |  | 2026-05-06 | 2026-05-19 | 19d | 20d |  |
| MEP-060 |  | CRAC installation |  | 10d | 2026-05-27 | 2026-06-09 | MEP-020, MEP-030 |  |  | 2026-05-06 | 2026-05-19 | -1d | 0d |  |
| MEP-080 |  | Cabling & terminations |  | 25d | 2026-06-03 | 2026-07-07 | MEP-060 SS+5d, MEP-070 |  |  | 2026-05-20 | 2026-06-23 | -1d | 0d |  |
|  | FIT | **Fit-Out & Finishes** |  |  | 2026-03-06 | 2026-05-04 |  |  |  |  |  |  |  |  |
| FIT-010 |  | Raised access floor |  | 15d | 2026-03-06 | 2026-03-26 | EW-030 |  |  | 2026-03-02 | 2026-03-20 | 45d | 0d |  |
| FIT-020 |  | Partitions & fire-stopping |  | 20d | 2026-03-13 | 2026-04-10 | FIT-010 SS+5d |  |  | 2026-03-09 | 2026-04-06 | 45d | 0d |  |
| FIT-030 |  | Ceilings & finishes |  | 15d | 2026-04-13 | 2026-05-04 | FIT-020 |  |  | 2026-04-07 | 2026-04-27 | 45d | 46d |  |

| ID | WBS | Activity | Duration | Start | Finish | Predecessors | Planned start | Planned finish | Total float | Free float | Constraint |
| --- | --- | --- | --- | --- | --- | --- | --- | --- | --- | --- | --- |
|  | CX | **Commissioning** |  | 2026-07-08 | 2026-09-08 |  |  |  |  |  |  |
| CX-010 |  | Pre-commissioning inspections | 10d | 2026-07-08 | 2026-07-21 | MEP-050, MEP-080, FIT-030 | 2026-06-24 | 2026-07-07 | -1d | 0d |  |
| CX-020 |  | L3 component commissioning | 15d | 2026-07-22 | 2026-08-11 | CX-010 | 2026-07-08 | 2026-07-28 | -1d | 0d |  |
| CX-030 |  | L4 integrated systems test | 10d | 2026-08-12 | 2026-08-25 | CX-020 | 2026-07-29 | 2026-08-11 | -1d | 0d |  |
| CX-040 |  | L5 IST & client witness | 10d | 2026-08-26 | 2026-09-08 | CX-030 | 2026-08-12 | 2026-08-25 | -1d | 0d | finish on or before 2026-09-15 |
